# LM3 manufacturing-method planning schedule

How a schedule from an IFC model changed from version to version. A marks actual dates.

## Version 1 (saved 2026-08-30)

Note of the change: mechanical assemblies

| ID | Task | Duration | Predecessors |
| --- | --- | --- | --- |
| LM3-MFG-010 | **Locally fabricated steel body, bogie and interface structures** | 72h |  |
| LM3-MFG-010-10 | Release material and fixture | 2h |  |
| LM3-MFG-010-20 | Cut, form, machine and deburr | 16h | LM3-MFG-010-10 |
| LM3-MFG-010-30 | Fixture, tack and survey | 8h | LM3-MFG-010-20 |
| LM3-MFG-010-40 | Qualified weld and controlled cool | 28h | LM3-MFG-010-30 |
| LM3-MFG-010-50 | NDT, machine datums and coat | 18h | LM3-MFG-010-40 |
| LM3-MFG-020 | **Reusable one-metre GFRP body/roof moulds and split end-cowl moulds** | 24h |  |
| LM3-MFG-020-10 | Inspect, clean and release mould | 1h |  |
| LM3-MFG-020-20 | Apply exterior finish primer or gelcoat | 1h 15min | LM3-MFG-020-10 |
| LM3-MFG-020-30 | Load reinforcement, core, solid lands and inserts | 3h | LM3-MFG-020-20 |
| LM3-MFG-020-40 | Bag, leak-test and infuse | 2h | LM3-MFG-020-30 |
| LM3-MFG-020-50 | Cure in mould | 12h | LM3-MFG-020-40 |
| LM3-MFG-020-60 | Demould, trim, seal and dry-fit | 4h 45min | LM3-MFG-020-50 |
| LM3-MFG-030 | **Solar-reflective, high-emittance exterior coating and thermal witness route** | 16h |  |
| LM3-MFG-030-10 | Condition and inspect substrate | 1h |  |
| LM3-MFG-030-20 | Prepare and prime | 2h | LM3-MFG-030-10 |
| LM3-MFG-030-30 | Apply reflective/emissive topcoat | 2h | LM3-MFG-030-20 |
| LM3-MFG-030-40 | Controlled cure | 10h | LM3-MFG-030-30 |
| LM3-MFG-030-50 | Inspect and retain coupons | 1h | LM3-MFG-030-40 |
| LM3-MFG-040 | **Replaceable side-window cassette, pressure frame, seal and drain installation** | 3h |  |
| LM3-MFG-040-10 | Receive and inspect cassette | 25min |  |
| LM3-MFG-040-20 | Gauge aperture and dry-fit | 35min | LM3-MFG-040-10 |
| LM3-MFG-040-30 | Install dry seal and pressure frame | 55min | LM3-MFG-040-20 |
| LM3-MFG-040-40 | Verify compression, drains and services | 25min | LM3-MFG-040-30 |
| LM3-MFG-040-50 | Water and replacement test | 40min | LM3-MFG-040-40 |
| LM3-MFG-050 | **Supplier door cassette on locally made four-point adjustable carrier** | 5h |  |
| LM3-MFG-050-10 | Accept supplier cassette and portal | 45min |  |
| LM3-MFG-050-20 | Lift, pin and adjust carrier | 1h 15min | LM3-MFG-050-10 |
| LM3-MFG-050-30 | Join, seal and connect | 1h | LM3-MFG-050-20 |
| LM3-MFG-050-40 | Static functional and safety tests | 1h 15min | LM3-MFG-050-30 |
| LM3-MFG-050-50 | Ingress and replacement demonstration | 45min | LM3-MFG-050-40 |
| LM3-MFG-060 | **Removable floor panels, transport flooring and common passenger-fixture rail** | 16h |  |
| LM3-MFG-060-10 | Dry-build removable floor and service hatches | 3h |  |
| LM3-MFG-060-20 | Prepare floor and pre-cut covering | 2h 30min | LM3-MFG-060-10 |
| LM3-MFG-060-30 | Bond covering | 3h 30min | LM3-MFG-060-20 |
| LM3-MFG-060-40 | Install service rails and inserts | 3h | LM3-MFG-060-30 |
| LM3-MFG-060-50 | Mount and proof passenger fixtures | 3h | LM3-MFG-060-40 |
| LM3-MFG-060-60 | Finish, cure and inspect | 1h | LM3-MFG-060-50 |
| LM3-MFG-070 | **Supplier traction motor/gearbox integration into locally fabricated powered bogie** | 12h |  |
| LM3-MFG-070-10 | Accept frame and supplier kits | 1h 30min |  |
| LM3-MFG-070-20 | Set wheelsets and running gear | 2h 30min | LM3-MFG-070-10 |
| LM3-MFG-070-30 | Install and align motor/gearbox | 3h | LM3-MFG-070-20 |
| LM3-MFG-070-40 | Route services and guards | 1h 30min | LM3-MFG-070-30 |
| LM3-MFG-070-50 | Static rotation, brake and electrical tests | 2h 30min | LM3-MFG-070-40 |
| LM3-MFG-070-60 | Release and preserve | 1h | LM3-MFG-070-50 |
| LM3-MFG-080 | **Lighting, HVAC, HV/LV services and keyed replaceable modules** | 16h |  |
| LM3-MFG-080-10 | Preassemble and test modules off vehicle | 3h |  |
| LM3-MFG-080-20 | Install rails, trays, ducts and curb seals | 3h | LM3-MFG-080-10 |
| LM3-MFG-080-30 | Install keyed LV/data and segregated HV services | 4h | LM3-MFG-080-20 |
| LM3-MFG-080-40 | Install HVAC, batteries and power modules | 3h | LM3-MFG-080-30 |
| LM3-MFG-080-50 | Cold commissioning | 2h | LM3-MFG-080-40 |
| LM3-MFG-080-60 | Functional release | 1h | LM3-MFG-080-50 |
| LM3-MFG-090 | **Three-car final assembly, static test and manufacturing release** | 48h |  |
| LM3-MFG-090-10 | Accept child assemblies and final road | 4h |  |
| LM3-MFG-090-20 | Bogie marriage and articulation | 10h | LM3-MFG-090-10 |
| LM3-MFG-090-30 | Close trainlines, couplers and remaining fit-out | 8h | LM3-MFG-090-20 |
| LM3-MFG-090-40 | Static systems commissioning | 12h | LM3-MFG-090-30 |
| LM3-MFG-090-50 | Geometry, mass and water tests | 6h | LM3-MFG-090-40 |
| LM3-MFG-090-60 | Independent review and controlled release | 8h | LM3-MFG-090-50 |

## Version 2 (saved 2026-09-04)

Note of the change: feat(rolling-stock): detail LM3 body fitout and finish system

Changed:

| ID | Task | Other |
| --- | --- | --- |
| LM3-MFG-020 | **Reusable GFRP body, roof, end-cowl and interior panel mould families** | was named Reusable one-metre GFRP body/roof moulds and split end-cowl moulds |
| LM3-MFG-030 | **In-mould base finish, applied livery film, and qualified radiative roof-coating route** | was named Solar-reflective, high-emittance exterior coating and thermal witness route |
| LM3-MFG-030-20 | Prepare base finish and cut film | was named Prepare and prime |
| LM3-MFG-030-30 | Apply livery film and candidate roof coating | was named Apply reflective/emissive topcoat |
